Schedule from a web Gantt chart, 2019-03-17 to 2021-01-29.

## Schedule

| ID | WBS | Task | Duration | Start | Finish |
| --- | --- | --- | --- | --- | --- |
| 1 | 1 | 【01_00_09_01】&[改行]境界杭確認&[改行]縄張り・砂敷 | 3d | 2019-04-13 | 2019-04-18 |
| 2 | 2 | テント設営 | 1d | 2019-04-18 | 2019-04-19 |
| 3 | 3 | 仮設給排水・公共枡接続 | 7d | 2019-06-22 | 2019-06-30 |
| 4 | 4 | ボーリング調査 | 6d | 2019-04-21 | 2019-04-27 |
| 6 | 5 | 作業員詰所設営 | 12d | 2019-05-28 | 2019-06-11 |
| 7 | 6 | 【22_00_01_00】&[改行]一般土間&[改行]基礎解体搬出 | 14d | 2019-04-27 | 2019-05-22 |
| 8 | 7 | 【22_00_01_00】&[改行]既存干渉杭撤去６本&[改行]干渉耐圧盤解体 | 27d | 2019-08-19 | 2019-09-19 |
| 9 | 8 | 【 】&[改行]薬液注入 | 18d | 2019-09-19 | 2019-10-10 |
| 10 | 9 | 【01_00_04_02】山留シートパイル&[改行]【01_00_04_01】親杭Ｈ鋼&[改行]簡易土留 | 18d | 2019-09-19 | 2019-10-10 |
| 11 | 10 | 【02_00_01_00】&[改行]一次掘削&[改行]ＧＬ-3000まで&[改行]2300ｍ3 | 8d | 2019-12-01 | 2019-12-11 |
| 12 | 11 | 【01_00_05_01】&[改行]切梁設置 | 10d | 2019-12-11 | 2019-12-22 |
| 13 | 12 | 【02_00_01_00】&[改行]2次掘削 2700ｍ3&[改行]スタイロフォーム敷・捨コン | 12d | 2019-12-22 | 2020-01-12 |
| 14 | 13 | 【22_00_01_00】&[改行]既存Ｂ1Ｆ&[改行]南側地下壁&[改行]解体・搬出 | 7d | 2019-12-28 | 2020-01-12 |
| 15 | 14 | 杭頭斫り | 5d | 2020-01-15 | 2020-01-21 |
| 16 | 15 | 片付 | 1d | 2019-04-20 | 2019-04-21 |
| 17 | 16 | 【01_00_08_00】&[改行]【01_00_09_00】&[改行]準備期間 | 5d | 2019-04-08 | 2019-04-13 |
| 18 | 17 | 【22_00_01_00】&[改行]切梁用梁と柱を残す&[改行]火打ちスラブ残置&[改行]1階床解体 | 7d | 2019-05-22 | 2019-05-30 |
| 19 | 18 | 【01_00_04_00】&[改行]点群測量&[改行]棚杭&[改行]釜場設置 | 5d | 2019-06-25 | 2019-07-01 |
| 20 | 19 | 【22_00_01_00】&[改行]残置Ｂ1柱8本&[改行]1Ｇ梁7本&[改行]火打用1階床スラブ&[改行]解体 | 16d | 2019-07-13 | 2019-08-01 |
| 21 | 20 | 【02_00_02_00】&[改行]一次埋戻し | 6d | 2019-07-06 | 2019-07-13 |
| 22 | 21 | 【03_00_01_00】&[改行]場所打ちコンクリート拡底杭&[改行]全周回転掘削&[改行] ＧＳＢ工法 19本 | 45d | 2019-10-10 | 2019-12-01 |
| 25 | 22 | 【04_00_01_01】&[改行]【04_00_01_02】&[改行]基礎&[改行]耐圧盤&[改行]配筋 | 4d | 2020-01-23 | 2020-01-28 |
| 26 | 23 | 型枠 | 5d | 2020-01-28 | 2020-02-02 |
| 27 | 24 | 【04_00_01_01】&[改行]【04_00_01_02】&[改行]検査&[改行]ＣＯＮ | 2d | 2020-02-02 | 2020-02-05 |
| 28 | 25 | 養生&[改行]脱型 | 2d | 2020-02-05 | 2020-02-07 |
| 29 | 26 | 墨出&[改行]Ｂ1Ｇ梁&[改行]配筋 | 4d | 2020-02-07 | 2020-02-12 |
| 30 | 27 | 型枠 | 4d | 2020-02-12 | 2020-02-16 |
| 31 | 28 | 【04_01_01_00】&[改行]【04_01_02_00】&[改行]検査&[改行]ＣＯＮ | 2d | 2020-02-16 | 2020-02-19 |
| 32 | 29 | Ｂ1Ｆ&[改行]スラブ型枠 | 4d | 2020-02-19 | 2020-02-23 |
| 33 | 30 | 【05_B01_01_00】&[改行]配筋&[改行]アンカー&[改行]セット | 4d | 2020-02-23 | 2020-02-28 |
| 34 | 31 | 【05_B01_02_00】&[改行]検査&[改行]ＣＯＮ | 2d | 2020-02-28 | 2020-03-01 |
| 35 | 32 | 墨出&[改行]アンカーチェック&[改行]レベル確認 | 2d | 2020-03-01 | 2020-03-04 |
| 36 | 33 | 【01_05_01_00】&[改行]切梁撤去 | 5d | 2020-03-04 | 2020-03-10 |
| 37 | 34 | 【04_00_01_01】&[改行]【04_00_01_02】&[改行]基礎&[改行]耐圧盤&[改行]配筋 | 4d | 2020-01-28 | 2020-02-01 |
| 38 | 35 | 型枠 | 5d | 2020-02-01 | 2020-02-07 |
| 39 | 36 | 【04_00_01_01】&[改行]【04_00_01_02】&[改行]検査&[改行]ＣＯＮ | 2d | 2020-02-07 | 2020-02-09 |
| 40 | 37 | 養生&[改行]脱型 | 2d | 2020-02-09 | 2020-02-12 |
| 41 | 38 | 墨出&[改行]Ｂ1Ｇ梁&[改行]配筋 | 4d | 2020-02-12 | 2020-02-16 |
| 42 | 39 | 型枠 | 4d | 2020-02-16 | 2020-02-21 |
| 43 | 40 | 【04_B01_02_00】&[改行]検査&[改行]ＣＯＮ | 2d | 2020-02-21 | 2020-02-23 |
| 44 | 41 | Ｂ1Ｆ&[改行]スラブ型枠 | 4d | 2020-02-23 | 2020-02-28 |
| 45 | 42 | 【05_B01_01_00】&[改行]配筋&[改行]アンカー&[改行]セット | 4d | 2020-02-28 | 2020-03-04 |
| 46 | 43 | 【05_B01_02_00】&[改行]検査&[改行]ＣＯＮ | 2d | 2020-03-04 | 2020-03-06 |
| 47 | 44 | 墨出&[改行]アンカーチェック&[改行]レベル確認 | 2d | 2020-03-06 | 2020-03-08 |
| 48 | 45 | 【05_B01_01_00】&[改行]０節鉄骨建方&[改行](B1F柱・1F梁) | 7d | 2020-03-08 | 2020-03-17 |
| 49 | 46 | Ａ工区 | 5d | 2020-01-24 | 2020-01-30 |
| 50 | 47 | Ｂ工区 | 5d | 2020-02-04 | 2020-02-09 |
| 51 | 48 | 柱壁配筋 | 5d | 2020-03-13 | 2020-03-19 |
| 52 | 49 | 型枠 | 5d | 2020-03-19 | 2020-03-25 |
| 53 | 50 | 【05_B01_02_00】&[改行]検査&[改行]ＣＯＮ | 2d | 2020-03-25 | 2020-03-27 |
| 54 | 51 | 1Ｇ・1Ｂ・1Ｓ&[改行]型枠・支保工 | 7d | 2020-03-27 | 2020-04-04 |
| 55 | 52 | 配筋 | 5d | 2020-04-04 | 2020-04-10 |
| 56 | 53 | 【05_01_02_00】&[改行]検査&[改行]ＣＯＮ | 1d | 2020-04-10 | 2020-04-11 |
| 57 | 54 | 柱壁配筋 | 5d | 2020-03-21 | 2020-03-27 |
| 58 | 55 | 型枠 | 5d | 2020-03-27 | 2020-04-02 |
| 59 | 56 | 【04_B01_02】&[改行]【05_B01_02_03】&[改行]検査&[改行]ＣＯＮ | 2d | 2020-04-02 | 2020-04-04 |
| 60 | 57 | 1Ｇ・1Ｂ・1Ｓ&[改行]型枠・支保工 | 7d | 2020-04-04 | 2020-04-12 |
| 61 | 58 | 配筋 | 5d | 2020-04-12 | 2020-04-18 |
| 62 | 59 | 【05_01_02_00】&[改行]検査&[改行]ＣＯＮ | 1d | 2020-04-18 | 2020-04-19 |
| 64 | 60 | 杭頭&[改行]斫り&[改行]杭芯&[改行]検査 | 3d | 2020-03-21 | 2020-03-25 |
| 66 | 61 | 【02_B01_01_00】&[改行]掘削&[改行]床付&[改行]捨コン | 3d | 2020-03-18 | 2020-03-21 |
| 67 | 62 | 【05_B01_01_00】&[改行]南面０節&[改行]鉄骨建方 | 3d | 2020-03-25 | 2020-03-28 |
| 68 | 63 | 基礎・柱&[改行]柱配筋 | 4d | 2020-03-28 | 2020-04-02 |
| 69 | 64 | 型枠 | 4d | 2020-04-02 | 2020-04-07 |
| 70 | 65 | 【04_B01_02_00】&[改行]検査&[改行]ＣＯＮ | 2d | 2020-04-07 | 2020-04-09 |
| 71 | 66 | 養生&[改行]脱型 | 2d | 2020-04-09 | 2020-04-11 |
| 72 | 67 | 【02_B01_02_00】&[改行]埋戻&[改行]転圧 | 2d | 2020-04-11 | 2020-04-14 |
| 73 | 68 | 【04_B01_02_00】&[改行]配筋&[改行]型枠&[改行]ＣＯＮ | 5d | 2020-04-14 | 2020-04-19 |
| 76 | 69 | 【22_00_01_00】&[改行]B1階床&[改行]地中梁&[改行]フーチング&[改行]解体・搬出 | 22d | 2019-05-30 | 2019-06-25 |
| 77 | 70 | 【21_00_01_00】&[改行]フーチング根本切断&[改行]ワイヤーソー使用 | 5d | 2019-07-01 | 2019-07-06 |

| ID | WBS | Task | Duration | Start | Finish |
| --- | --- | --- | --- | --- | --- |
| 78 | 71 | 【02_00_02_00】&[改行]GL迄埋戻し | 5d | 2019-08-01 | 2019-08-07 |
| 80 | 72 | 【22_00_01_00】&[改行]外周壁解体&[改行]GL-1500迄 | 4d | 2019-08-07 | 2019-08-19 |
| 82 | 73 | 【22_00_01_00】&[改行]既存耐圧版&[改行]整形斫り | 2d | 2020-01-12 | 2020-01-15 |
| 83 | 74 | 【14_00_01_00】&[改行]養生・脱枠・補修&[改行]外やり防水 | 7d | 2020-04-19 | 2020-04-28 |
| 84 | 75 | 【02_00_02_00】&[改行]外周埋戻し | 6d | 2020-04-28 | 2020-05-08 |
| 85 | 76 | 墨出 | 7d | 2020-04-19 | 2020-04-28 |
| 86 | 77 | 【01_00_07_00】&[改行]タワークレーン組立 | 6d | 2020-04-28 | 2020-05-08 |
| 87 | 78 | 鉄骨建方&[改行]準備 | 3d | 2020-05-08 | 2020-05-12 |
| 88 | 79 | 【01_07】&[改行]クライミング | 2d | 2020-06-04 | 2020-06-06 |
| 89 | 80 | 【01_00_07_00】&[改行]クライミング | 2d | 2020-06-20 | 2020-06-23 |
| 90 | 81 | 本締 | 7d | 2020-05-14 | 2020-05-22 |
| 91 | 82 | 梁溶接 | 9d | 2020-05-22 | 2020-06-02 |
| 92 | 83 | 本締 | 11d | 2020-05-22 | 2020-06-04 |
| 93 | 84 | 柱・梁溶接 | 16d | 2020-05-25 | 2020-06-12 |
| 94 | 85 | 本締 | 11d | 2020-06-06 | 2020-06-19 |
| 95 | 86 | 柱・梁溶接 | 14d | 2020-06-10 | 2020-06-26 |
| 96 | 87 | 本締 | 8d | 2020-06-21 | 2020-07-01 |
| 97 | 88 | 柱・梁溶接 | 9d | 2020-06-23 | 2020-07-03 |
| 98 | 89 | 本締 | 16d | 2020-07-01 | 2020-07-19 |
| 99 | 90 | 柱・梁溶接 | 17d | 2020-07-04 | 2020-07-24 |
| 108 | 91 | 【06_02_02_00】&[改行]デッキプレート | 7d | 2020-06-02 | 2020-06-10 |
| 109 | 92 | 【06_03_02_00】&[改行]デッキPL | 7d | 2020-06-10 | 2020-06-18 |
| 110 | 93 | 【06_04_02_00】&[改行]デッキPL | 5d | 2020-06-18 | 2020-06-24 |
| 111 | 94 | 【06_05_02_00】&[改行]デッキPL | 5d | 2020-06-24 | 2020-06-30 |
| 112 | 95 | 【06_06_02_00】&[改行]デッキPL | 5d | 2020-06-30 | 2020-07-05 |
| 113 | 96 | 【06_07_02_00】&[改行]デッキPL | 5d | 2020-07-05 | 2020-07-11 |
| 114 | 97 | 【06_08_02_00】&[改行]デッキPL | 5d | 2020-07-11 | 2020-07-17 |
| 115 | 98 | 【06_09_02_00】&[改行]デッキPL | 5d | 2020-07-17 | 2020-07-23 |
| 116 | 99 | 【06_10_02_00】&[改行]デッキPL | 5d | 2020-07-23 | 2020-07-29 |
| 117 | 100 | 【06_11_02_00】&[改行]デッキPL | 5d | 2020-07-29 | 2020-08-04 |
| 118 | 101 | 【06_12_02_00】&[改行]デッキPL | 5d | 2020-08-04 | 2020-08-09 |
| 119 | 102 | 【06_13_02_00】&[改行]デッキPL | 5d | 2020-08-09 | 2020-08-19 |
| 120 | 103 | 【06_14_02_00】&[改行]デッキPL | 7d | 2020-07-24 | 2020-08-01 |
| 121 | 104 | コン止PL | 4d | 2020-06-24 | 2020-06-28 |
| 122 | 105 | 床壁配筋 | 4d | 2020-06-28 | 2020-07-03 |
| 123 | 106 | 型枠 | 3d | 2020-07-03 | 2020-07-07 |
| 124 | 107 | 【06_04_03_00】&[改行]検査・コン | 2d | 2020-07-07 | 2020-07-09 |
| 125 | 108 | コン止PL | 4d | 2020-08-19 | 2020-08-23 |
| 126 | 109 | 床壁配筋 | 4d | 2020-08-23 | 2020-08-28 |
| 127 | 110 | 型枠 | 3d | 2020-08-28 | 2020-09-01 |
| 128 | 111 | 【06_13_03_00】&[改行]検査・コン | 2d | 2020-09-01 | 2020-09-03 |
| 129 | 112 | コン止PL | 6d | 2020-08-01 | 2020-08-08 |
| 130 | 113 | 床壁配筋 | 7d | 2020-08-08 | 2020-08-20 |
| 131 | 114 | 型枠 | 7d | 2020-08-20 | 2020-08-28 |
| 132 | 115 | 【06_14_03_00】&[改行]検査・スラブコン | 2d | 2020-08-28 | 2020-08-30 |
| 133 | 116 | 【23_14_01_00】【08_14_01_02】&[改行]設備配管・セメント成形版 | 12d | 2020-09-23 | 2020-10-07 |
| 134 | 117 | 【14_14_01_02】&[改行]アスファルト防水 | 8d | 2020-10-07 | 2020-10-16 |
| 135 | 118 | 設備基礎配筋 | 3d | 2020-08-30 | 2020-09-03 |
| 136 | 119 | 【07_14_02_00】&[改行]型枠・コン | 3d | 2020-09-03 | 2020-09-06 |
| 137 | 120 | 養生・脱枠 | 3d | 2020-09-06 | 2020-09-10 |
| 138 | 121 | 躯体整形 | 5d | 2020-09-10 | 2020-09-16 |
| 139 | 122 | 【05_14_01_00】&[改行]鉄骨組立 | 6d | 2020-09-16 | 2020-09-23 |
| 140 | 123 | 【10_14_02_01】&[改行]伸縮目地&[改行]シンダーコンクリート | 8d | 2020-10-16 | 2020-10-25 |
| 141 | 124 | 養生 | 6d | 2020-10-25 | 2020-11-01 |
| 142 | 125 | 【10_14_02_04】&[改行]メンテナンスデッキ | 8d | 2020-11-01 | 2020-11-11 |
| 143 | 126 | 【23_14_01_00】&[改行]設備 | 10d | 2020-11-11 | 2020-11-22 |
| 144 | 127 | 【21_14_03_02】&[改行]ルーフテラス&[改行]植栽&[改行]デッキ&[改行]ルーバー&[改行]目隠壁 | 14d | 2020-11-22 | 2020-12-09 |
| 146 | 128 | 【01_00_04_01】&[改行]【01_00_04_02】&[改行]シートパイル&[改行]親杭H鋼&[改行]引抜き | 5d | 2020-05-02 | 2020-05-12 |
| 148 | 129 | コン止PL | 4d | 2020-06-30 | 2020-07-04 |
| 149 | 130 | 床壁配筋 | 4d | 2020-07-04 | 2020-07-09 |
| 150 | 131 | 型枠 | 3d | 2020-07-09 | 2020-07-12 |
| 151 | 132 | 【06_05_03_00】&[改行]検査・コン | 2d | 2020-07-12 | 2020-07-15 |
| 152 | 133 | コン止PL | 4d | 2020-07-05 | 2020-07-10 |
| 153 | 134 | 床壁配筋 | 4d | 2020-07-10 | 2020-07-15 |
| 154 | 135 | 型枠 | 3d | 2020-07-15 | 2020-07-18 |
| 155 | 136 | 【06_06_03_00】&[改行]検査・コン | 2d | 2020-07-18 | 2020-07-21 |
| 156 | 137 | コン止PL | 4d | 2020-07-11 | 2020-07-16 |
| 157 | 138 | 床壁配筋 | 4d | 2020-07-16 | 2020-07-21 |
| 158 | 139 | 型枠 | 3d | 2020-07-21 | 2020-07-24 |
| 159 | 140 | 【06_07_03_00】&[改行]検査・コン | 2d | 2020-07-24 | 2020-07-26 |

| ID | WBS | Task | Duration | Start | Finish |
| --- | --- | --- | --- | --- | --- |
| 160 | 141 | コン止PL | 4d | 2020-07-17 | 2020-07-22 |
| 161 | 142 | 床壁配筋 | 4d | 2020-07-22 | 2020-07-26 |
| 162 | 143 | 型枠 | 3d | 2020-07-26 | 2020-07-30 |
| 163 | 144 | 【06_08_03】&[改行]検査・コン | 2d | 2020-07-30 | 2020-08-01 |
| 164 | 145 | コン止PL | 4d | 2020-07-23 | 2020-07-28 |
| 165 | 146 | 床壁配筋 | 4d | 2020-07-28 | 2020-08-01 |
| 166 | 147 | 型枠 | 3d | 2020-08-01 | 2020-08-05 |
| 167 | 148 | 【06_09_03】&[改行]検査・コン | 2d | 2020-08-05 | 2020-08-07 |
| 168 | 149 | コン止PL | 4d | 2020-07-29 | 2020-08-02 |
| 169 | 150 | 床壁配筋 | 4d | 2020-08-02 | 2020-08-07 |
| 170 | 151 | 型枠 | 3d | 2020-08-07 | 2020-08-11 |
| 171 | 152 | 【06_10_03_00】&[改行]検査・コン | 2d | 2020-08-11 | 2020-08-13 |
| 172 | 153 | コン止PL | 4d | 2020-08-04 | 2020-08-08 |
| 173 | 154 | 床壁配筋 | 4d | 2020-08-08 | 2020-08-13 |
| 174 | 155 | 型枠 | 3d | 2020-08-13 | 2020-08-20 |
| 175 | 156 | 【06_11_03_00】&[改行]検査・コン | 2d | 2020-08-20 | 2020-08-22 |
| 176 | 157 | コン止PL | 4d | 2020-08-09 | 2020-08-18 |
| 177 | 158 | 床壁配筋 | 4d | 2020-08-18 | 2020-08-22 |
| 178 | 159 | 型枠 | 3d | 2020-08-22 | 2020-08-26 |
| 179 | 160 | 【06_12_03_00】&[改行]検査・コン | 2d | 2020-08-26 | 2020-08-28 |
| 180 | 161 | コン止PL | 4d | 2020-06-18 | 2020-06-23 |
| 181 | 162 | 床壁配筋 | 4d | 2020-06-23 | 2020-06-27 |
| 182 | 163 | 型枠 | 3d | 2020-06-27 | 2020-07-01 |
| 183 | 164 | 【06_03_03_00】&[改行]検査・コン | 2d | 2020-07-01 | 2020-07-03 |
| 184 | 165 | 【09_05_01_00】【09_05_02_00】【10_05_01_00】【10_05_02_00】【11_05_01_00】&[改行]【12_05_00_00】【13_05_01_00】【13_05_02_00】【15_05_03_00】【16_05_00_00】【23_05_01_00】&[改行]内装仕上げ工事 | 90d | 2020-07-15 | 2020-10-31 |
| 185 | 166 | 【09_06_01_00】【09_06_02_00】【10_06_01_00】【10_06_02_00】【11_06_01_00】&[改行]【12_06_00_00】【13_06_01_00】【13_06_02_00】【15_06_03_00】【16_06_00_00】【23_06_01_00】&[改行]内装仕上げ工事 | 90d | 2020-07-21 | 2020-11-06 |
| 186 | 167 | 【09_07_01_00】【09_07_02_00】【10_07_01_00】【10_07_02_00】【11_07_01_00】&[改行]【12_07_00_00】【13_07_01_00】【13_07_02_00】【15_07_03_00】【16_07_00_00】【23_07_01_00】&[改行]内装仕上げ工事 | 90d | 2020-07-26 | 2020-11-12 |
| 187 | 168 | 【09_08_01】【09_08_02】【10_08_01】【10_08_02】【11_08_01】&[改行]【12_08】【13_08_01】【13_08_02】【15_08_03】【16_08】【23_08_01】&[改行]内装仕上げ工事 | 90d | 2020-08-01 | 2020-11-18 |
| 188 | 169 | 【09_09_01】【09_09_02】【10_09_01】【10_09_02】【11_09_01】&[改行]【12_09】【13_09_01】【13_09_02】【15_09_03】【16_09】【23_09_01】&[改行]内装仕上げ工事 | 90d | 2020-08-07 | 2020-11-24 |
| 189 | 170 | 【09_10_01_00】【09_10_02_00】【10_10_01_00】【10_10_02_00】【11_10_01_00】&[改行]【12_10_00_00】【13_10_01_00】【13_10_02_00】【15_10_03_00】【16_10_00_00】【23_10_01_00】&[改行]内装仕上げ工事 | 90d | 2020-08-13 | 2020-11-29 |
| 190 | 171 | 【09_11_01_00】【09_11_02_00】【10_11_01_00】【10_11_02_00】【11_11_01_00】&[改行]【12_11_00_00】【13_11_01_00】【13_11_02_00】【15_11_03_00】【16_11_00_00】【23_11_01_00】&[改行]内装仕上げ工事 | 90d | 2020-08-22 | 2020-12-05 |
| 191 | 172 | 【09_12_01_00】【09_12_02_00】【10_12_01_00】【10_12_02_00】【11_12_01_00】&[改行]【12_12_00_00】【13_12_01_00】【13_12_02_00】【15_12_03_00】【16_12_00_00】【23_12_01_00】&[改行]内装仕上げ工事 | 90d | 2020-08-28 | 2020-12-11 |
| 192 | 173 | 【01_00_07_00】タワークレーン | 93d | 2020-04-28 | 2020-08-21 |
| 193 | 174 | コン止PL | 4d | 2020-06-10 | 2020-06-14 |
| 194 | 175 | 床壁配筋 | 4d | 2020-06-14 | 2020-06-19 |
| 195 | 176 | 型枠 | 3d | 2020-06-19 | 2020-06-23 |
| 196 | 177 | 【06_02_03_00】&[改行]検査・コン | 2d | 2020-06-23 | 2020-06-25 |
| 198 | 178 | 【23_00_02_01】&[改行]本設EV 1～3号機組立 | 48d | 2020-11-04 | 2020-12-30 |
| 199 | 179 | 【01_00_06_00】&[改行]本設EVピット内使用 | 101d | 2020-07-04 | 2020-11-03 |
| 200 | 180 | 【23_00_02_01】&[改行]本設EV 4号機組立 | 25d | 2020-10-04 | 2020-11-03 |
| 203 | 181 | 本設 EV4号機 仮設使用 | 50d | 2020-11-04 | 2021-01-05 |
| 204 | 182 | 【08_00_01_00】&[改行]外装セメント成形版・サッシ・化粧金物・シール・塗装・ルーフテラスルーバー・屋上目隠壁は先行塗装 | 108d | 2020-06-25 | 2020-11-01 |
| 205 | 183 | 【23_13_01_00】&[改行]【09_13_01_05】&[改行]設備配管&[改行]セメント成形版 | 12d | 2020-09-03 | 2020-09-17 |
| 206 | 184 | 【 】&[改行]耐火被覆 | 3d | 2020-09-17 | 2020-09-20 |
| 207 | 185 | 【12_13_00_00】&[改行]AW | 5d | 2020-09-30 | 2020-10-06 |
| 208 | 186 | 【09_13_01_02】&[改行]耐火遮音間仕切 | 7d | 2020-10-06 | 2020-10-14 |
| 209 | 187 | 【15_13_03_00】&[改行]吹付発泡ウレタン | 3d | 2020-10-18 | 2020-10-22 |
| 210 | 188 | 【11_13_01_00】&[改行]システム天井 | 8d | 2020-11-04 | 2020-11-13 |
| 211 | 189 | 【09_13_02_02】&[改行]【09_13_02_01】&[改行]壁塗装・クロス | 6d | 2020-11-13 | 2020-11-20 |
| 212 | 190 | 【10_13_02_03】&[改行]【10_13_01_06】&[改行]OAフロア・タイルカーペット | 7d | 2020-11-20 | 2020-11-28 |
| 213 | 191 | 【10_13_01_04】&[改行]床長尺シート | 6d | 2020-11-28 | 2020-12-05 |
| 214 | 192 | 床コン補修 | 8d | 2020-09-20 | 2020-09-30 |
| 215 | 193 | 【23_13_01_00】&[改行]設備配管 | 4d | 2020-10-14 | 2020-10-18 |
| 216 | 194 | 天井軽鉄下地&[改行]共用部 | 3d | 2020-10-22 | 2020-10-25 |
| 217 | 195 | 【09_13_01_01】&[改行]天井内&[改行]壁間仕切 | 2d | 2020-10-25 | 2020-10-28 |
| 218 | 196 | 【09_13_01_01】&[改行]壁ボード張&[改行]一般部 | 4d | 2020-10-28 | 2020-11-01 |
| 219 | 197 | 【11_13_01_00】&[改行]天井ボード張&[改行]共用部 | 2d | 2020-11-01 | 2020-11-04 |
| 220 | 198 | 【01_00_01_00】外部足場 | 158d | 2020-05-23 | 2020-11-27 |
| 221 | 199 | 跳ねだしブラケット解体 | 3d | 2020-11-27 | 2020-12-01 |
| 222 | 200 | 雨養生解体 | 4d | 2020-10-04 | 2020-10-09 |
| 223 | 201 | 【06_14_02_00】ダメ穴デッキプレート | 7d | 2020-10-09 | 2020-10-17 |
| 224 | 202 | 床配筋 | 5d | 2020-10-17 | 2020-10-23 |
| 225 | 203 | 【06_14_03_00】&[改行]【14_14_01_02】&[改行]【10_14_02_01】&[改行]コンクリート | 4d | 2020-10-23 | 2020-10-28 |
| 226 | 204 | 養生 | 5d | 2020-10-28 | 2020-11-03 |
| 227 | 205 | 補修 | 2d | 2020-11-03 | 2020-11-05 |
| 228 | 206 | 【23_14_01_00】&[改行]設備配管 | 11d | 2020-11-05 | 2020-11-18 |
| 229 | 207 | 【09_13_01_00】&[改行]【11_13_01_00】&[改行]【15_13_03_00】&[改行]壁・天井軽鉄ボード | 10d | 2020-11-18 | 2020-11-29 |
| 230 | 208 | 【10_13_01_00】&[改行]床仕上げ | 12d | 2020-11-29 | 2020-12-13 |
| 231 | 209 | 【23_B01_01_00】&[改行]【23_B01_01_03】&[改行]【23_B01_01_04】&[改行]機械式駐車場設備 &[改行]機械据付工事 電気工事 | 52d | 2020-10-01 | 2020-12-01 |
| 232 | 210 | 【23_B01_01_00】&[改行]【23_B01_02_00】&[改行]【09_B01_02_02】&[改行]【11_B01_01_03】&[改行]調整&[改行]塗装工事&[改行]試運転&[改行]諸検査 | 25d | 2020-12-01 | 2021-01-01 |

| ID | WBS | Task | Duration | Start | Finish |
| --- | --- | --- | --- | --- | --- |
| 233 | 211 | 型枠支保工 養生 | 21d | 2020-04-19 | 2020-05-18 |
| 234 | 212 | 型枠支保工解体・搬出 | 6d | 2020-05-18 | 2020-05-24 |
| 235 | 213 | 躯体整形 | 6d | 2020-05-24 | 2020-05-31 |
| 236 | 214 | 作業員休憩所 | 87d | 2020-05-31 | 2020-09-13 |
| 237 | 215 | 【10_B01_02_01】&[改行]シンダーCON | 3d | 2020-09-13 | 2020-09-17 |
| 238 | 216 | 養生 | 5d | 2020-09-17 | 2020-09-23 |
| 239 | 217 | 【10_B01_01_07】&[改行]防塵塗装 | 4d | 2020-09-23 | 2020-09-27 |
| 240 | 218 | 養生 | 3d | 2020-09-27 | 2020-10-01 |
| 241 | 219 | 躯体整形 | 6d | 2020-05-24 | 2020-05-31 |
| 242 | 220 | 【23_B01_01_00】&[改行]設備配管 | 7d | 2020-11-23 | 2020-12-01 |
| 243 | 221 | 養生 | 6d | 2020-11-16 | 2020-11-23 |
| 244 | 222 | 【14_B01_01_00】&[改行]塗膜防水 | 6d | 2020-11-09 | 2020-11-16 |
| 246 | 223 | 【21_01_01_00】&[改行]【21_01_04_00】&[改行]【21_01_50_00】&[改行]外構躯体 | 5d | 2020-12-01 | 2020-12-07 |
| 247 | 224 | 【21_01_03_01】&[改行]【21_01_03_03】&[改行]外構植栽 | 6d | 2020-12-07 | 2020-12-14 |
| 248 | 225 | 【21_01_02_01】&[改行]【21_01_02_02】&[改行]バリカー&[改行]ツリーサークル&[改行]床タイル&[改行]インターロッキング&[改行]アスファルト舗装 | 17d | 2020-12-14 | 2021-01-06 |
| 249 | 226 | 【12_00_02_00】&[改行]AW | 5d | 2020-07-26 | 2020-08-01 |
| 250 | 227 | 【09_02_01_02】&[改行]耐火遮音間仕切 | 7d | 2020-08-01 | 2020-08-09 |
| 251 | 228 | 【15_02_03_00】&[改行]吹付発泡ウレタン | 3d | 2020-08-18 | 2020-08-21 |
| 252 | 229 | 【11_02_01_00】&[改行]システム天井 | 8d | 2020-09-03 | 2020-09-12 |
| 253 | 230 | 【09_02_02_02】&[改行]【09_02_02_02】&[改行]壁塗装・クロス | 6d | 2020-09-12 | 2020-09-19 |
| 254 | 231 | 【10_02_02_03】&[改行]【10_02_01_06】&[改行]OAフロア・タイルカーペット | 7d | 2020-09-19 | 2020-09-27 |
| 255 | 232 | 【10_02_01_04】&[改行]床長尺シート | 6d | 2020-09-27 | 2020-10-04 |
| 256 | 233 | 床コン補修 | 8d | 2020-07-17 | 2020-07-26 |
| 257 | 234 | 【23_02_01_00】&[改行]設備配管 | 4d | 2020-08-09 | 2020-08-18 |
| 258 | 235 | 【11_02_01_00】&[改行]天井軽鉄下地&[改行]共用部 | 3d | 2020-08-21 | 2020-08-25 |
| 259 | 236 | 【09_02_01_01】&[改行]天井内&[改行]壁間仕切 | 2d | 2020-08-25 | 2020-08-27 |
| 260 | 237 | 【09_02_01_01】&[改行]壁ボード張&[改行]一般部 | 4d | 2020-08-27 | 2020-09-01 |
| 261 | 238 | 【11_02_01_00】&[改行]天井ボード張&[改行]共用部 | 2d | 2020-09-01 | 2020-09-03 |
| 262 | 239 | 【12_01_00_00】&[改行]AW | 5d | 2020-10-07 | 2020-10-13 |
| 263 | 240 | 【09_01_01_02】&[改行]耐火遮音間仕切 | 7d | 2020-10-13 | 2020-10-21 |
| 264 | 241 | 【15_01_03_00】&[改行]吹付発泡ウレタン | 3d | 2020-10-25 | 2020-10-29 |
| 265 | 242 | 【11_01_01_00】&[改行]システム天井 | 8d | 2020-11-11 | 2020-11-20 |
| 266 | 243 | 【09_01_02_02】&[改行]【09_01_02_01】&[改行]壁塗装・クロス | 6d | 2020-11-20 | 2020-11-27 |
| 267 | 244 | 【10_01_02_03】&[改行]【10_01_01_06】&[改行]OAフロア・タイルカーペット | 7d | 2020-11-27 | 2020-12-05 |
| 268 | 245 | 【10_01_01_04】&[改行]床長尺シート | 6d | 2020-12-05 | 2020-12-12 |
| 269 | 246 | 床コン補修 | 4d | 2020-10-02 | 2020-10-07 |
| 270 | 247 | 【23_01_01_00】&[改行]設備配管 | 4d | 2020-10-21 | 2020-10-25 |
| 271 | 248 | 【11_01_01_00】&[改行]天井軽鉄下地&[改行]共用部 | 3d | 2020-10-29 | 2020-11-01 |
| 272 | 249 | 【09_01_01_01】&[改行]天井内&[改行]壁間仕切 | 2d | 2020-11-01 | 2020-11-04 |
| 273 | 250 | 【09_01_01_01】&[改行]【13_01_01_00】&[改行]壁ボード張&[改行]一般部 | 4d | 2020-11-04 | 2020-11-08 |
| 274 | 251 | 【11_01_01_00】&[改行]天井ボード張&[改行]共用部 | 2d | 2020-11-08 | 2020-11-11 |
| 276 | 252 | 【11_01_01_04】&[改行]天井ルーバー アルミパネル | 6d | 2020-11-29 | 2020-12-06 |
| 277 | 253 | 【09_01_02_03】&[改行]【09_01_02_00】&[改行]壁タイル アルミパネル | 8d | 2020-11-20 | 2020-11-29 |
| 278 | 254 | 天井下地 | 9d | 2020-11-06 | 2020-11-17 |
| 279 | 255 | 【23_01_01_04】&[改行]電気配線 | 3d | 2020-11-17 | 2020-11-20 |
| 280 | 256 | 【23_01_01_00】&[改行]設備配管 | 10d | 2020-10-25 | 2020-11-06 |
| 281 | 257 | 1階 共用部 | 21d | 2020-10-20 | 2020-11-13 |
| 283 | 258 | 【11_02_01_00】&[改行]【11_02_01_04】&[改行]天井ルーバー アルミパネル | 6d | 2020-12-04 | 2020-12-11 |
| 284 | 259 | 【09_02_02_03】&[改行]【09_02_02_00】&[改行]壁タイル アルミパネル | 12d | 2020-11-13 | 2020-11-27 |
| 285 | 260 | 天井下地 | 5d | 2020-11-01 | 2020-11-07 |
| 286 | 261 | 【23_02_01_04】&[改行]電気配線 | 5d | 2020-11-07 | 2020-11-13 |
| 287 | 262 | ガラス手摺 | 6d | 2020-11-27 | 2020-12-04 |
| 288 | 263 | 【20_02_00_00】&[改行]サイン取付 | 3d | 2020-12-23 | 2020-12-26 |
| 289 | 264 | 【20_01_00_00】&[改行]サイン取付 | 7d | 2020-12-18 | 2020-12-26 |
| 290 | 265 | 2階 共用部 | 18d | 2020-10-18 | 2020-11-08 |
| 291 | 266 | 【23_02_01_00】&[改行]設備配管 | 5d | 2020-10-27 | 2020-11-01 |
| 292 | 267 | 養生 | 2d | 2020-10-24 | 2020-10-27 |
| 293 | 268 | 【10_02_02_01】&[改行]伸縮目地&[改行]押えコンクリート | 4d | 2020-10-20 | 2020-10-24 |
| 294 | 269 | 【14_02_01_02】&[改行]アスファルト防水 | 8d | 2020-10-10 | 2020-10-20 |
| 295 | 270 | 仮設工事使用 | 109d | 2020-05-12 | 2020-09-19 |
| 296 | 271 | 【23_00_01_00】&[改行]【09_02_01_05】&[改行]設備配管&[改行]セメント成形版 | 12d | 2020-06-25 | 2020-07-09 |
| 297 | 272 | 【 】&[改行]耐火被覆 | 7d | 2020-07-09 | 2020-07-17 |
| 298 | 273 | 【23_01_01_00】&[改行]【09_01_01_05】&[改行]設備配管&[改行]セメント成形版 | 8d | 2020-09-19 | 2020-09-29 |
| 299 | 274 | 【 】&[改行]耐火被覆 | 3d | 2020-09-29 | 2020-10-02 |
| 302 | 275 | 清掃 | 19d | 2020-12-12 | 2021-01-07 |
| 303 | 276 | 清掃 | 7d | 2020-12-26 | 2021-01-07 |
| 308 | 277 | 【06_14_02_00】&[改行]【06_14_03_00】&[改行]【14_14_01_02】&[改行]【10_14_02_01】&[改行]TCダメ工事 | 4d | 2020-12-09 | 2020-12-13 |
| 309 | 278 | 【23_13_01_00】&[改行]器具付 | 7d | 2020-12-05 | 2020-12-13 |
| 316 | 279 | 【23_14_01】&[改行]設備機器据付 | 14d | 2020-12-13 | 2020-12-30 |
| 326 | 280 | 各検査 手直し | 18d | 2021-01-07 | 2021-01-29 |

| ID | WBS | Task | Duration | Start | Finish |
| --- | --- | --- | --- | --- | --- |
| 329 | 281 | &[改行] 建物概要&[改行]&[改行] 主要用途 事務所 物販店舗 飲食店舗&[改行]&[改行] 敷地面積 1&[改行]&[改行] 建築面積 985.67㎡&[改行]&[改行] 延べ面積 12&[改行]&[改行] 駐車場面積 717.14㎡&[改行]&[改行]&[改行] 階数 地上13階 地下1階&[改行]&[改行] 階高 基準階高 3.95ｍ&[改行] &[改行] 基準階事務所天井高 2.8ｍ&[改行]&[改行] 基礎形式 杭基礎&[改行]&[改行] 構造種別 鉄骨造（地下SRC造）&[改行] 最高高さ 58.45ｍ | 73d | 2019-03-17 | 2019-06-21 |
| 330 | 282 | 【09_04_01_00】【09_04_02_00】【10_04_01_00】【10_04_02_00】【11_04_01_00】&[改行]【12_04_00】【13_04_01_00】【13_04_02_00】【15_04_03_00】【16_04_00_00】【23_04_01_00】&[改行]内装仕上げ工事 | 90d | 2020-07-09 | 2020-10-25 |
| 331 | 283 | 【09_03_01_00】【09_03_02_00】【10_03_01_00】【10_03_02_00】【11_03_01_00】&[改行]【12_03_00_00】【13_03_01_00】【13_03_02_00】【15_03_03_00】【16_03_00_00】【23_03_01_00】&[改行]内装仕上げ工事 | 90d | 2020-07-03 | 2020-10-20 |
| 332 | 284 | 【01_00_07_00】OTS-60 | 38d | 2020-08-21 | 2020-10-04 |
| 334 | 285 | 出来高 | 29d | 2019-03-27 | 2019-05-09 |
| 335 | 286 | 1F柱溶接 | 6d | 2020-05-14 | 2020-05-21 |
| 337 | 287 | 【05_01_01_00】&[改行]【05_02_01_00】&[改行]【05_01_01_03】&[改行]【05_02_01_03】&[改行]1節鉄骨建方&[改行]鉄骨階段&[改行] | 9d | 2020-05-12 | 2020-05-22 |
| 338 | 288 | 【05_03_01_00】&[改行]【05_04_01_00】&[改行]【05_05_01_00】&[改行]【05_03_01_03】&[改行]【05_04_01_03】&[改行]【05_05_01_03】&[改行]2節鉄骨建方&[改行]鉄骨階段 | 11d | 2020-05-22 | 2020-06-04 |
| 339 | 289 | 【05_06_01_00】&[改行]【05_07_01_00】&[改行]【05_08_01_00】&[改行]【05_06_01_03】&[改行]【05_07_01_03】&[改行]【05_08_01_03】&[改行]3節鉄骨建方&[改行]鉄骨階段 | 12d | 2020-06-05 | 2020-06-19 |
| 340 | 290 | 【05_09_01_00】&[改行]【05_10_01_00】&[改行]【05_09_01_03】&[改行]【05_10_01_03】&[改行]4節鉄骨建方&[改行]鉄骨階段 | 9d | 2020-06-23 | 2020-07-03 |
| 341 | 291 | 【05_11_01_00】&[改行]【05_12_01_00】&[改行]【05_13_01_00】&[改行]【05_11_01_03】&[改行]【05_12_01_03】&[改行]【05_13_01_03】&[改行]5節鉄骨建方&[改行]鉄骨階段 | 14d | 2020-07-03 | 2020-07-19 |
